# High level NTI schedule

Schedule from MS Project, 2014-03-13 to 2014-11-11.

## Calendars

- Standard: Mon-Fri 08:00-12:00, 13:00-17:00; Sat-Sun off.

## Resources

| Resource |
| --- |
| mob |

## Schedule

| ID | WBS | Task | Type | Duration | Start | Finish | Predecessors | Total slack | Resources | Work |
| --- | --- | --- | --- | --- | --- | --- | --- | --- | --- | --- |
| 1 | 1 | **Pre-NTI/Scouting** |  | 35d | 2014-03-13 | 2014-04-30 |  | 0d |  | 320h |
| 2 | 1.1 | **Assess Needs** |  | 28d | 2014-03-13 | 2014-04-21 |  | 0d |  | 224h |
| 3 | 1.1.1 | IS & SHOULD map for HISD |  | 2w | 2014-03-13 | 2014-03-26 |  | 0d | mob | 80h |
| 4 | 1.1.2 | IS & SHOULD map for SEMS |  | 3d | 2014-03-27 | 2014-03-31 | 3 | 0d | mob | 24h |
| 5 | 1.1.3 | Investigate & select Deployment Scenario |  | 5d | 2014-04-01 | 2014-04-07 | 4 | 0d | mob | 40h |
| 6 | 1.1.4 | Performance Testing [HISD site to St. Paul] |  | 2w | 2014-04-08 | 2014-04-21 | 5 | 0d | mob | 80h |
| 7 | 1.2 | Engage Partner (MCS) | milestone | 0d | 2014-04-21 | 2014-04-21 | 2 | 0d |  |  |
| 8 | 1.3 | Define Architecture for TFS DEV Instance |  | 2d | 2014-04-22 | 2014-04-23 | 6, 7 | 0d | mob | 16h |
| 9 | 1.4 | **Explore Due Diligence Items** |  | 5d | 2014-04-24 | 2014-04-30 | 8 | 0d | mob | 80h |
| 10 | 1.4.1 | Licensing |  | 2d | 2014-04-24 | 2014-04-25 |  | 0d | mob | 16h |
| 11 | 1.4.2 | Regulatory Compliance |  | 1d | 2014-04-28 | 2014-04-28 | 10 | 0d | mob | 8h |
| 12 | 1.4.3 | Define monitoring criteria |  | 2d | 2014-04-29 | 2014-04-30 | 11 | 0d | mob | 16h |
| 13 | 2 | **Explore** |  | 54d? | 2014-04-30 | 2014-07-15 | 1 | 0d |  |  |
| 14 | 2.1 | Enter Explore Phase | milestone | 0d | 2014-04-30 | 2014-04-30 |  | 0d |  |  |
| 15 | 2.2 | Gather & prioritize requirements from candidate Divisions and Teams - create backlog |  | 5d | 2014-05-01 | 2014-05-07 | 14 | 0d |  |  |
| 16 | 2.3 | Determine Support and Solution Team size and skillset |  | 2d? | 2014-05-08 | 2014-05-09 | 15 | 0d |  |  |
| 17 | 2.4 | Define Supported Process Template(s) |  | 3d? | 2014-05-12 | 2014-05-14 | 16 | 0d |  |  |
| 18 | 2.5 | Deploy Dev Instance |  | 3d? | 2014-05-15 | 2014-05-19 | 17 | 0d |  |  |
| 19 | 2.6 | Define Reporting |  | 3d? | 2014-05-20 | 2014-05-22 | 18 | 0d |  |  |
| 20 | 2.7 | Define Training Ciriculum |  | 3d? | 2014-05-01 | 2014-05-05 |  | 51d |  |  |
| 21 | 2.8 | Define 'ETFS' Homepage - usage/purpose |  | 5d? | 2014-05-23 | 2014-05-29 | 19 | 0d |  |  |
| 22 | 2.9 | Define Architecture for QA & PROD Instances |  | 5d? | 2014-05-30 | 2014-06-05 | 21 | 0d |  |  |
| 23 | 2.10 | Define Migration method/process for Team Projects |  | 2w? | 2014-06-06 | 2014-06-19 | 22 | 0d |  |  |
| 24 | 2.11 | Perform trial migration of SEMS Team Projects |  | 1w? | 2014-06-20 | 2014-06-26 | 23 | 0d |  |  |

| ID | WBS | Task | Type | Duration | Start | Finish | Predecessors | Total slack | Free slack |
| --- | --- | --- | --- | --- | --- | --- | --- | --- | --- |
| 25 | 2.12 | **Cost** |  | 13d | 2014-06-27 | 2014-07-15 | 24 | 0d |  |
| 26 | 2.12.1 | explore several methods of chargeback |  | 2w | 2014-06-27 | 2014-07-10 |  | 0d |  |
| 27 | 2.12.2 | Determine infrastructure/licensing costs |  | 3d | 2014-07-11 | 2014-07-15 | 26 | 0d |  |
| 28 | 3 | **Qualify** |  | 85d? | 2014-07-16 | 2014-11-11 | 13 | 0d |  |
| 29 | 3.1 | Enter Qualify Phase | milestone | 0d | 2014-08-26 | 2014-08-26 | 34 | 0d |  |
| 30 | 3.2 | Create Training Material |  | 10d? | 2014-07-16 | 2014-07-29 |  | 75d |  |
| 31 | 3.3 | Implement Supported Process Template(s) |  | 3w? | 2014-08-27 | 2014-09-16 | 29 | 0d |  |
| 32 | 3.4 | Implement Reporting |  | 5w? | 2014-09-17 | 2014-10-21 | 31 | 0d |  |
| 33 | 3.5 | Implement 'ETFS' homepage |  | 3w? | 2014-10-22 | 2014-11-11 | 32, 35 | 0d |  |
| 34 | 3.6 | Deploy QA & PROD instances |  | 6w | 2014-07-16 | 2014-08-26 |  | 0d |  |
| 35 | 3.7 | Trial Migration of HISD Team Projects to QA/PROD instance ["Go Live" with HISD] - evaluate and adjust |  | 4w | 2014-07-16 | 2014-08-12 |  | 50d | 0d |
| 36 | 3.8 | Complete Migration of HISD Team Projects |  | 3w | 2014-08-13 | 2014-09-02 | 35 | 50d |  |
| 37 | 4 | **Deploy** |  | 1d | 2014-11-11 | 2014-11-11 | 28 |  |  |
| 38 | 4.1 | Enter Deploy Phase - "Go Live" with Enterprise TFS service for other divisions | milestone | 0d | 2014-11-11 | 2014-11-11 |  | 1d |  |
