# Ceradyne_Migration_Plan

Schedule from MS Project, 2015-11-23 to 2015-12-28, A marks actual dates.
3M

## Calendars

- Standard: Mon-Fri 08:00-12:00, 13:00-17:00; Sat-Sun off. Exceptions (off unless hours are given): 2015-11-25 to 2015-11-29 (Thanksgiving), 2015-12-23 to 2015-12-27 (Christmas).

## Resources

| Resource |
| --- |
| Everett Taylor |
| Michael O'Brien |
| Emily Gregerson |
| Ricardo Gallegos |
| Fred Kantner |

## Schedule

| ID | WBS | Task | Type | Duration | Start | Finish | Predecessors | Complete | Remaining | Total slack | Free slack | Constraint | Resources | Work | Actual work |
| --- | --- | --- | --- | --- | --- | --- | --- | --- | --- | --- | --- | --- | --- | --- | --- |
| 1 | 1 | **Plan** |  | 3.5d | 2015-11-23 08:00 A | 2015-12-01 12:00 |  | 39% | 2.15d | -0.25d | 0d |  |  | 70h | 14h |
| 2 | 1.1 | Initial team selection | milestone | 0d | 2015-11-23 08:00 A | 2015-11-23 08:00 A |  | 100% |  |  |  |  | Everett Taylor; Michael O'Brien; Fred Kantner; Ricardo Gallegos |  |  |
| 3 | 1.2 | Review existing on-boarding documentation | milestone | 0d | 2015-11-23 08:00 A | 2015-11-23 08:00 A |  | 100% |  |  |  |  | Everett Taylor; Fred Kantner; Michael O'Brien; Ricardo Gallegos |  |  |
| 4 | 1.3 | Develop detailed project plan | milestone | 0d | 2015-11-23 08:00 A | 2015-11-23 08:00 A | 3 | 100% |  |  |  |  | Everett Taylor |  |  |
| 5 | 1.4 | Review project plan | milestone | 0d | 2015-11-23 08:00 A | 2015-11-23 08:00 A | 4 | 100% |  |  |  | start no earlier than 2015-11-23 08:00 | Everett Taylor; Michael O'Brien; Fred Kantner; Ricardo Gallegos |  |  |
| 6 | 1.5 | Identify current end users for project, by role |  | 0.25d | 2015-11-23 08:00 | 2015-11-23 10:00 | 5 |  |  | 0.12d | 0d | start no earlier than 2015-11-23 08:00 | Everett Taylor; Ricardo Gallegos; Michael O'Brien | 6h |  |
| 7 | 1.6 | Determine development platforms in use |  | 0.25d | 2015-11-23 10:00 A | 2015-11-23 12:00 | 6 | 50% | 0.12d | -0.25d | 0d |  | Everett Taylor; Ricardo Gallegos | 4h | 2h |
| 8 | 1.7 | Gather existing MSDN subscription information for all users |  | 2d | 2015-11-23 13:00 | 2015-11-30 12:00 | 7 |  |  | -0.25d | 0d |  | Michael O'Brien; Ricardo Gallegos | 32h |  |
| 9 | 1.8 | Determine pricing based on team(s) |  | 1d | 2015-11-30 13:00 | 2015-12-01 12:00 | 8 |  |  | -0.25d | 0d |  | Everett Taylor; Michael O'Brien | 16h |  |
| 10 | 1.9 | Identify repos that must be migrated |  | 0.25d | 2015-11-30 13:00 A | 2015-11-30 15:00 A | 8 | 100% |  |  |  |  | Fred Kantner; Everett Taylor; Ricardo Gallegos | 6h | 6h |
| 11 | 1.10 | Determine Team Project delination | milestone | 0d | 2015-11-30 15:00 A | 2015-11-30 15:00 A | 10 | 100% |  |  |  |  | Everett Taylor |  |  |
| 12 | 1.11 | Determine best method to migrate existing repos |  | 0.5d | 2015-11-30 15:00 A | 2015-12-01 10:00 A | 10 | 100% |  |  |  |  | Fred Kantner | 4h | 4h |
| 13 | 1.12 | Determine length and depth of training for onboarding |  | 0.25d | 2015-11-30 15:00 A | 2015-11-30 17:00 A | 10 | 100% |  |  |  |  | Everett Taylor | 2h | 2h |
| 14 | 1.13 | Compare current development methodology against Scrum |  | 0.5d | 2015-11-30 15:00 A | 2015-12-01 10:00 A | 10 | 100% |  |  |  |  |  |  |  |
| 15 | 1.14 | Determine build services needs |  | 0.5d | 2015-11-30 15:00 A | 2015-12-01 10:00 A | 10 | 100% |  |  |  |  |  |  |  |
| 16 | 2 | **Prepare** |  | 6.1d | 2015-12-01 10:00 A | 2015-12-09 10:48 | 1 | 46% | 3.32d | 0d |  |  |  | 54h | 12h |
| 17 | 2.1 | Create TPC on export control instance | milestone | 0d | 2015-12-01 10:00 A | 2015-12-01 10:00 A |  | 100% |  |  |  |  | Everett Taylor |  |  |
| 18 | 2.2 | Create test Team Project on tfsec01 |  | 0.5d | 2015-12-01 10:00 A | 2015-12-02 09:00 A | 17 | 100% |  |  |  |  | Everett Taylor | 4h | 4h |
| 19 | 2.3 | Create AD groups, set custodians |  | 0.25d | 2015-12-02 09:00 A | 2015-12-02 11:00 A | 18 | 100% |  |  |  |  | Everett Taylor | 2h | 2h |
| 20 | 2.4 | Admin primer for SecurityExpress |  | 0.25d | 2015-12-02 11:00 A | 2015-12-02 14:00 A | 19 | 100% |  |  |  |  | Everett Taylor; Ricardo Gallegos; Fred Kantner | 6h | 6h |
| 21 | 2.5 | Assign users to AD groups |  | 0.25d | 2015-12-02 14:00 | 2015-12-02 16:00 | 20 |  |  | 2.73d | 0d |  | Emily Gregerson; Ricardo Gallegos | 4h |  |
| 22 | 2.6 | Add users to email distribution |  | 0.25d | 2015-12-02 16:00 | 2015-12-03 09:00 | 21 |  |  | 2.73d | 0d |  | Everett Taylor | 2h |  |
| 23 | 2.7 | Define areas and iterations |  | 0.25d | 2015-12-03 09:00 | 2015-12-03 11:00 | 22 |  |  | 2.73d | 0d |  | Fred Kantner; Everett Taylor; Ricardo Gallegos | 6h |  |
| 24 | 2.8 | Define Teams for Team Projects |  | 0.25d | 2015-12-03 11:00 | 2015-12-03 14:00 | 23 |  |  | 2.73d | 0d |  | Fred Kantner; Everett Taylor; Ricardo Gallegos | 6h |  |
| 25 | 2.9 | Develop migration guidance document as deliverable |  | 1d | 2015-12-03 14:00 | 2015-12-04 14:00 | 24 |  |  | 2.73d |  |  | Everett Taylor; Michael O'Brien | 16h |  |
| 26 | 2.10 | Get .NET and RoR pilot developers to test migration results |  | 0.5d | 2015-12-02 09:00 | 2015-12-02 14:00 | 18 |  |  | 4.72d |  |  | Fred Kantner; Ricardo Gallegos | 8h |  |
| 27 | 2.11 | Procure version control cache server for remote office |  | 3.6d | 2015-12-01 10:00 A | 2015-12-09 10:48 A | 1 | 100% |  |  |  |  |  |  |  |
| 28 | 2.12 | Prepare for build services |  | 3d | 2015-12-01 13:00 | 2015-12-04 12:00 | 15 |  |  | 2.85d |  |  |  |  |  |

Notes:
- 2: Everett Taylor, Michael O'Brien, Ricardo Gallegos, Fred Kantner
- 3: Use on-boarding steps to fill in project plan details
- 4: Build in detail
- 5: Review detailed plan, risk mitigation
- 6: Teams typically 1-2 per project, suggest Scrum.
- 7: Visual Studio only, determine compatibility with Aptana
- 8: Ceradyne has no MSDN subscriptions
- 9: VSTS pricing vs. current pricing
- 10: Mostly hand loading, manual history imports
- 11: No delineation between EC and non-EC instance
- 12: Mostly hand loading
- 13: Source control only to start. Short primer for developers.
- 14: What is current methodology, and what is the gap to move to Scrum?
- 15: Manual builds now, need to revist for build automation
- 17: Create separate TPC
- 18: Use Scrum template. All data will go into EC instance.
- 19: Basic three groups. Do we need separate admin groups for each repo?
- 20: Need basic primer for AD group assignments
- 21: ET to do initial assignment. Maintain user DL for project to broadcast.
- 22: Add to Lotus Notes DL
- 23: For each Team Project?
- 24: What Teams are needed for each Team Project?
- 25: Details based on current state of project plan
- 26: Review results
- 27: Git repo at main site and remote locations (Git caching)
- 28: Manual builds now, need to revist for build automation

| ID | WBS | Task | Duration | Start | Finish | Predecessors | Complete | Remaining | Total slack | Resources | Work |
| --- | --- | --- | --- | --- | --- | --- | --- | --- | --- | --- | --- |
| 29 | 3 | **Test** | 1d | 2015-12-09 10:48 | 2015-12-10 10:48 | 16 |  |  | 0d |  | 30h |
| 30 | 3.1 | **Prepare existing repos** | 1d | 2015-12-09 10:48 | 2015-12-10 10:48 |  |  |  | 0d |  | 14h |
| 31 | 3.1.1 | Verify backup and restore for sample repos | 0.5d | 2015-12-09 10:48 | 2015-12-09 15:48 |  |  |  | 0d | Fred Kantner; Ricardo Gallegos | 8h |
| 32 | 3.1.2 | Build out detailed upgrade schedule | 0.25d | 2015-12-09 15:48 | 2015-12-10 08:48 | 31 |  |  | 0d | Everett Taylor; Ricardo Gallegos | 4h |
| 33 | 3.1.3 | Notify all users of upcoming upgrade schedule | 0.25d | 2015-12-10 08:48 | 2015-12-10 10:48 | 32 |  |  | 0d | Everett Taylor | 2h |
| 34 | 3.2 | **Perform test migrations into TFS EC instance** | 1d | 2015-12-09 10:48 | 2015-12-10 10:48 |  |  |  | 0d | Everett Taylor; Fred Kantner | 16h |
| 35 | 3.2.1 | **Test migration for each repo** | 1d | 2015-12-09 10:48 | 2015-12-10 10:48 |  |  |  | 0d |  |  |
| 36 | 3.2.1.1 | Repo 1 | 1d | 2015-12-09 10:48 | 2015-12-10 10:48 |  |  |  | 0d |  |  |
| 37 | 3.2.1.2 | Repo 2 | 1d | 2015-12-09 10:48 | 2015-12-10 10:48 |  |  |  | 0d |  |  |
| 38 | 3.2.1.3 | Repo 3 | 1d | 2015-12-09 10:48 | 2015-12-10 10:48 |  |  |  | 0d |  |  |
| 39 | 4 | **Train** | 4d | 2015-12-09 10:48 | 2015-12-15 10:48 | 16 |  |  | 6d |  | 44h |
| 40 | 4.1 | Develop training content | 4d | 2015-12-09 10:48 | 2015-12-15 10:48 |  |  |  | 6d | Everett Taylor | 32h |
| 41 | 4.2 | Train developers | 0.5d | 2015-12-09 10:48 | 2015-12-09 15:48 |  |  |  | 9.5d | Everett Taylor | 4h |
| 42 | 4.3 | Train testers | 0.5d | 2015-12-09 10:48 | 2015-12-09 15:48 |  |  |  | 9.5d | Everett Taylor | 4h |
| 43 | 4.4 | Train managers | 0.5d | 2015-12-09 10:48 | 2015-12-09 15:48 |  |  |  | 9.5d | Everett Taylor | 4h |
| 44 | 5 | **Execute** | 6d? | 2015-12-10 10:48 A | 2015-12-18 10:48 | 29 | 18% | 4.91d? | 0d |  |  |
| 45 | 5.1 | Notify all users of upcoming migration schedule | 1d? | 2015-12-10 10:48 | 2015-12-11 10:48 |  |  |  | 5d |  |  |
| 46 | 5.2 | **Migrate each repo** | 1d | 2015-12-10 10:48 | 2015-12-11 10:48 | 29 |  |  | 0d |  |  |
| 47 | 5.2.1 | Repo 1 | 1d | 2015-12-10 10:48 | 2015-12-11 10:48 |  |  |  | 0d |  |  |
| 48 | 5.2.2 | Repo 2 | 1d | 2015-12-10 10:48 | 2015-12-11 10:48 |  |  |  | 0d |  |  |
| 49 | 5.2.3 | Repo 3 | 1d | 2015-12-10 10:48 | 2015-12-11 10:48 |  |  |  | 0d |  |  |
| 50 | 5.3 | Set up and configure any necessary build services | 5d? | 2015-12-11 10:48 | 2015-12-18 10:48 | 46 |  |  | 0d |  |  |
| 51 | 5.4 | Set up and configure cache server, test for performance | 2d? | 2015-12-11 10:48 A | 2015-12-15 10:48 A | 46 | 100% |  |  |  |  |
| 52 | 6 | **Review** | 2d | 2015-12-18 10:48 | 2015-12-22 10:48 | 44 |  |  | 0d |  |  |
| 53 | 6.1 | Final validation of results | 2d | 2015-12-18 10:48 | 2015-12-22 10:48 |  |  |  | 0d |  |  |

Notes:
- 30: Prepare before transfer and import testing
- 31: Backup repo, restore and test. Must be done if needed to roll back.
- 32: Just a basic migration schedule. Ceradyne only.
- 33: Basic migration cutover.
- 34: Will require several iterations, FK will verify
- 36: Pack and transfer archive. Import. Verify results.
- 37: Pack and transfer archive. Import. Verify results.
- 38: Pack and transfer archive. Import. Verify results.
- 40: Need primer for developers
- 41: TBD
- 42: TBD
- 43: TBD
- 47: Pack and transfer archive. Import. Verify results.
- 48: Pack and transfer archive. Import. Verify results.
- 49: Pack and transfer archive. Import. Verify results.
- 51: Try without proxy server first. Repos are Git based.

| ID | WBS | Task | Duration | Start | Finish | Predecessors | Total slack |
| --- | --- | --- | --- | --- | --- | --- | --- |
| 54 | 7 | **Finalize** | 1d? | 2015-12-22 10:48 | 2015-12-28 10:48 | 52 | 0d |
| 55 | 7.1 | Post-mordem | 0.25d | 2015-12-22 10:48 | 2015-12-22 13:48 |  | 0.75d |
| 56 | 7.2 | Address any remaining issues | 1d? | 2015-12-22 10:48 | 2015-12-28 10:48 |  | 0d |
| 57 | 7.3 | Archive and decommission old remote repos | 1d? | 2015-12-22 10:48 | 2015-12-28 10:48 |  | 0d |
