# Cogent_Migration_Plan

Schedule from MS Project, 2015-11-20 to 2015-12-28, A marks actual dates.
3M

## Calendars

- Standard: Mon-Fri 08:00-12:00, 13:00-17:00; Sat-Sun off. Exceptions (off unless hours are given): 2015-11-25 to 2015-11-29 (Thanksgiving), 2015-12-23 to 2015-12-27 (Christmas).

## Resources

| Resource |
| --- |
| Everett Taylor |
| Michael O'Brien |
| Emily Gregerson |
| Brandon Knutson |
| Piin Tsang |
| Alex Rea |

## Schedule

| ID | WBS | Task | Type | Duration | Start | Finish | Predecessors | Complete | Remaining | Total slack | Free slack | Constraint | Resources | Work | Actual work |
| --- | --- | --- | --- | --- | --- | --- | --- | --- | --- | --- | --- | --- | --- | --- | --- |
| 1 | 1 | **Plan** |  | 5d | 2015-11-20 08:00 A | 2015-12-01 17:00 |  | 30% | 3.5d | -0.5d | 0d |  |  | 76h | 20h |
| 2 | 1.1 | Initial team selection |  | 0.25d | 2015-11-20 08:00 A | 2015-11-20 10:00 A |  | 100% |  |  |  |  | Everett Taylor; Emily Gregerson | 2h | 2h |
| 3 | 1.2 | Ensure that ETFS export control instance is in compliance | milestone | 0d | 2015-11-20 08:00 A | 2015-11-20 08:00 A |  | 100% |  |  |  |  | Everett Taylor |  |  |
| 4 | 1.3 | Review existing on-boarding documentation |  | 0.25d | 2015-11-20 08:00 A | 2015-11-20 10:00 A |  | 100% |  |  |  |  | Everett Taylor | 2h | 2h |
| 5 | 1.4 | Develop detailed project plan |  | 0.25d | 2015-11-20 08:00 A | 2015-11-20 10:24 A | 4 | 100% |  |  |  |  | Everett Taylor | 2h | 2h |
| 6 | 1.5 | Review project plan |  | 0.25d | 2015-12-01 08:00 A | 2015-12-01 10:00 | 5 | 50% | 0.12d | -2.25d | 0d | start no earlier than 2015-11-23 08:00 | Emily Gregerson; Everett Taylor; Michael O'Brien; Piin Tsang | 8h | 4h |
| 7 | 1.6 | Find location for plan and supporting documentation |  | 0.25d | 2015-12-01 10:00 | 2015-12-01 12:00 | 6 |  |  | -2.25d | 0d |  | Everett Taylor | 2h |  |
| 8 | 1.7 | Identify current end users for Cogent, by role |  | 0.25d | 2015-12-01 13:00 | 2015-12-01 15:00 | 7 |  |  | -2.25d | 0d | start no earlier than 2015-11-23 08:00 | Piin Tsang | 2h |  |
| 9 | 1.8 | Determine development platforms in use |  | 0.25d | 2015-12-01 15:00 | 2015-12-01 17:00 | 8 |  |  | -2.25d | 0d |  | Everett Taylor; Piin Tsang | 4h |  |
| 10 | 1.9 | Gather existing MSDN subscription information for all users |  | 0.5d | 2015-11-24 08:00 A | 2015-11-24 12:00 A | 9 | 100% |  |  |  |  | Alex Rea; Everett Taylor | 8h | 8h |
| 11 | 1.10 | Identify repos that must be migrated |  | 0.25d | 2015-12-01 08:00 | 2015-12-01 10:00 | 10 |  |  | -2d | 0d | start no earlier than 2015-12-01 08:00 | Everett Taylor; Piin Tsang | 4h |  |
| 12 | 1.11 | Grant Everett access to VSS servers |  | 0.25d | 2015-12-01 10:00 A | 2015-12-01 12:00 | 11 | 50% | 0.12d | 0d |  |  | Alex Rea; Everett Taylor | 4h | 2h |
| 13 | 1.12 | Determine Team Project delination |  | 0.25d | 2015-12-01 10:00 | 2015-12-01 12:00 | 11 |  |  | -2d | 0d | start no earlier than 2015-12-01 08:00 | Everett Taylor; Piin Tsang | 4h |  |
| 14 | 1.13 | Determine best method to migrate SVN repos |  | 0.5d | 2015-12-01 10:00 | 2015-12-01 15:00 | 11 |  |  | -2d | 0d | start no earlier than 2015-12-01 08:00 | Everett Taylor; Alex Rea | 4h |  |
| 15 | 1.14 | Determine length and depth of training for onboarding |  | 0.25d | 2015-12-01 10:00 | 2015-12-01 12:00 | 11 |  |  | -1.75d | 0d | start no earlier than 2015-12-01 08:00 | Everett Taylor; Piin Tsang; Michael O'Brien | 6h |  |
| 16 | 1.15 | Compare current development methodology against Scrum |  | 0.5d | 2015-12-01 10:00 | 2015-12-01 15:00 | 11 |  |  | -2d | 0d | start no earlier than 2015-12-01 08:00 | Everett Taylor; Piin Tsang; Michael O'Brien | 12h |  |
| 17 | 1.16 | Determine scope of any RedMine tasks into TFS |  | 0.25d | 2015-12-01 13:00 | 2015-12-01 15:00 | 13 |  |  | -2d | 0d |  | Everett Taylor; Piin Tsang | 4h |  |
| 18 | 1.17 | Determine build services needs |  | 0.5d | 2015-12-01 10:00 | 2015-12-01 15:00 | 11 |  |  | -2d | 0d | start no earlier than 2015-12-01 08:00 | Everett Taylor; Michael O'Brien | 8h |  |
| 19 | 2 | **Prepare** |  | 5.5d | 2015-11-24 15:00 A | 2015-12-07 10:00 | 1 | 9% | 5.02d | 0d |  |  |  | 131.2h | 6.8h |
| 20 | 2.1 | Create test Team Project on tfsec01 |  | 0.25d | 2015-12-01 10:00 A | 2015-12-01 16:00 A |  | 100% |  |  |  |  | Everett Taylor | 2h | 2h |
| 21 | 2.2 | Set up SVN server on integration server |  | 0.5d | 2015-12-02 08:00 | 2015-12-02 12:00 | 20 |  |  | 2.75d |  |  | Everett Taylor | 4h |  |
| 22 | 2.3 | Create AD groups, set custodians |  | 0.25d | 2015-12-02 08:00 | 2015-12-02 10:00 | 20 |  |  | 0.5d | 0.25d |  | Everett Taylor | 2h |  |
| 23 | 2.4 | Assign users to AD groups |  | 0.25d | 2015-12-03 08:00 | 2015-12-03 10:00 | 22 |  |  | 0.25d | 0d |  | Everett Taylor | 2h |  |
| 24 | 2.5 | Add users to email distribution |  | 0.25d | 2015-12-03 10:00 | 2015-12-03 12:00 | 23 |  |  | 0.25d | 0d |  | Everett Taylor | 2h |  |
| 25 | 2.6 | Define areas and iterations |  | 0.25d | 2015-12-03 13:00 | 2015-12-03 15:00 | 24 |  |  | 0.25d | 0d |  | Everett Taylor; Piin Tsang | 4h |  |
| 26 | 2.7 | Define Teams for Team Projects |  | 0.25d | 2015-12-03 15:00 | 2015-12-03 17:00 | 25 |  |  | 0.25d | 0d |  | Everett Taylor; Piin Tsang | 4h |  |
| 27 | 2.8 | Develop migration guidance document as deliverable |  | 1d | 2015-12-04 08:00 | 2015-12-04 17:00 | 26 |  |  | 0.25d |  |  | Everett Taylor | 8h |  |
| 28 | 2.9 | Get .NET and Java pilot developers to test migration results |  | 0.5d | 2015-12-02 08:00 | 2015-12-02 12:00 | 20 |  |  | 2.75d |  |  | Everett Taylor; Piin Tsang | 8h |  |
| 29 | 2.10 | Verify FTP setup for file transfers |  | 0.25d | 2015-12-02 08:00 | 2015-12-02 10:00 | 20 |  |  | 3d |  |  | Alex Rea; Everett Taylor | 4h |  |
| 30 | 2.11 | Procure proxy server for Pasadena office |  | 3d | 2015-11-24 15:00 A | 2015-12-07 10:00 | 1 | 20% | 2.4d | 0d |  |  | Everett Taylor; Alex Rea | 43.2h | 4.8h |
| 31 | 2.12 | Prepare for build services |  | 3d | 2015-12-02 08:00 | 2015-12-04 17:00 | 18 |  |  | 0.25d |  |  | Everett Taylor; Michael O'Brien | 48h |  |

Notes:
- 2: Piin Tsang, Alex Rea, Everett Taylor
- 3: Waiting for approval from security team after submission
- 4: Use on-boarding steps to fill in project plan details
- 5: Build in detail
- 6: Review detailed plan, risk mitigation
- 7: ETFS or Confluence?
- 8: How many developers, testers, managers, etc.
- 9: Visual Studio, Eclipse, etc.
- 10: Alex has licensing information
- 11: Both VSS and SVN. Work with Piin to identify.
- 12: Grant domain admin permissions for local access.
- 13: How to break down the Team Projects in the Cogent TPC
- 14: Is there sufficient bandwidth to import SVN repos from remote server?
- 15: What training is necessary? How can it be delivered?
- 16: What is current methodology, and what is the gap to move to Scrum?
- 17: Look one last time for integration solution to import.
- 18: What build processes do they currently have in place?
- 20: Use Scrum template. All Cogent data will go into EC instance.
- 21: Set up and configure on tfsmigration.usac.mmm.com
- 22: Basic three groups. Do we need separate admin groups for each repo?
- 23: ET to do initial assignment. Maintain user DL for project to broadcast.
- 24: Add to Lotus Notes DL
- 25: For each Team Project?
- 26: What Teams are needed for each Team Project?
- 27: Details based on current state of project plan
- 28: Both VSS and SVN. Need one developer each.
- 29: Does the FTP site still exist for Alex and Everett to push files?
- 30: Hardware has been requested
- 31: Build services identified during the Plan phase

| ID | WBS | Task | Duration | Start | Finish | Predecessors | Total slack | Resources | Work |
| --- | --- | --- | --- | --- | --- | --- | --- | --- | --- |
| 32 | 3 | **Test** | 3d | 2015-12-07 10:00 | 2015-12-10 10:00 | 19 | 0d |  | 216h |
| 33 | 3.1 | **Prepare existing repos** | 2d | 2015-12-07 10:00 | 2015-12-09 10:00 |  | 0d | Everett Taylor | 96h |
| 34 | 3.1.1 | Verify backup and restore for sample repos | 0.5d | 2015-12-07 10:00 | 2015-12-07 15:00 |  | 0d | Alex Rea | 4h |
| 35 | 3.1.2 | Build out detailed upgrade schedule | 0.25d | 2015-12-07 15:00 | 2015-12-07 17:00 | 34 | 0d | Alex Rea; Everett Taylor; Piin Tsang | 6h |
| 36 | 3.1.3 | Notify all users of upcoming upgrade schedule | 0.25d | 2015-12-08 08:00 | 2015-12-08 10:00 | 35 | 0d | Everett Taylor | 2h |
| 37 | 3.1.4 | Provide VS 6 developers with basic connectivity information | 0.5d | 2015-12-08 10:00 | 2015-12-08 15:00 | 36 | 1.5d | Everett Taylor | 4h |
| 38 | 3.1.5 | **Run analyze to correct and corruption or versioning issues** | 0.5d | 2015-12-08 10:00 | 2015-12-08 15:00 | 36 | 0d | Everett Taylor; Piin Tsang | 32h |
| 39 | 3.1.5.1 | CustomerCfg | 0.5d | 2015-12-08 10:00 | 2015-12-08 15:00 |  | 0d | Everett Taylor; Piin Tsang | 8h |
| 40 | 3.1.5.2 | Repo 2 | 0.5d | 2015-12-08 10:00 | 2015-12-08 15:00 |  | 0d | Everett Taylor; Piin Tsang | 8h |
| 41 | 3.1.5.3 | Repo 3 | 0.5d | 2015-12-08 10:00 | 2015-12-08 15:00 |  | 0d | Everett Taylor; Piin Tsang | 8h |
| 42 | 3.1.6 | **Upgrade existing repos to latest version of VSS** | 0.5d | 2015-12-08 15:00 | 2015-12-09 10:00 | 38 | 0d | Everett Taylor; Piin Tsang | 32h |
| 43 | 3.1.6.1 | CustomerCfg | 0.5d | 2015-12-08 15:00 | 2015-12-09 10:00 |  | 0d | Everett Taylor; Piin Tsang | 8h |
| 44 | 3.1.6.2 | Repo 2 | 0.5d | 2015-12-08 15:00 | 2015-12-09 10:00 |  | 0d | Everett Taylor; Piin Tsang | 8h |
| 45 | 3.1.6.3 | Repo 3 | 0.5d | 2015-12-08 15:00 | 2015-12-09 10:00 |  | 0d | Everett Taylor; Piin Tsang | 8h |
| 46 | 3.2 | **Perform test migrations into TFS EC instance** | 1d | 2015-12-09 10:00 | 2015-12-10 10:00 | 42 | 0d | Everett Taylor; Piin Tsang; Alex Rea | 120h |
| 47 | 3.2.1 | **Test migration for each repo** | 1d | 2015-12-09 10:00 | 2015-12-10 10:00 |  | 0d | Alex Rea; Piin Tsang; Everett Taylor | 96h |
| 48 | 3.2.1.1 | CustomerCfg | 1d | 2015-12-09 10:00 | 2015-12-10 10:00 |  | 0d | Alex Rea; Piin Tsang; Everett Taylor | 24h |
| 49 | 3.2.1.2 | Repo 2 | 1d | 2015-12-09 10:00 | 2015-12-10 10:00 |  | 0d | Alex Rea; Piin Tsang; Everett Taylor | 24h |
| 50 | 3.2.1.3 | Repo 3 | 1d | 2015-12-09 10:00 | 2015-12-10 10:00 |  | 0d | Alex Rea; Piin Tsang; Everett Taylor | 24h |
| 51 | 4 | **Train** | 4d | 2015-12-07 10:00 | 2015-12-11 10:00 | 19 | 8d |  | 44h |
| 52 | 4.1 | Develop training content | 4d | 2015-12-07 10:00 | 2015-12-11 10:00 |  | 8d | Everett Taylor | 32h |
| 53 | 4.2 | Train developers | 0.5d | 2015-12-07 10:00 | 2015-12-07 15:00 |  | 11.5d | Everett Taylor | 4h |
| 54 | 4.3 | Train testers | 0.5d | 2015-12-07 10:00 | 2015-12-07 15:00 |  | 11.5d | Everett Taylor | 4h |
| 55 | 4.4 | Train managers | 0.5d | 2015-12-07 10:00 | 2015-12-07 15:00 |  | 11.5d | Everett Taylor | 4h |

Notes:
- 33: Prepare before transfer and import testing
- 34: Backup repo, restore and test. Must be done if needed to roll back.
- 35: Cannot develop detailed schedule until scope is determined
- 36: Which repos the users must be out of every night
- 37: Need to know how to configure and use MSSCCI provider
- 38: Users must be out of the repos
- 39: Analyze -f on VSS repo for auto fix, review results (in Pasadena)
- 40: Analyze -f on VSS repo for auto fix, review results (in Pasadena)
- 41: Analyze -f on VSS repo for auto fix, review results (in Pasadena)
- 42: Users must be out of the repos
- 43: DDUPD VSS upgrade to VSS 2005, review results (in Pasadena)
- 44: DDUPD VSS upgrade to VSS 2005, review results (in Pasadena)
- 45: DDUPD VSS upgrade to VSS 2005, review results (in Pasadena)
- 46: Will require several iterations, SC and PT will verify
- 48: Pack and transfer archive. Import. Verify results.
- 49: Pack and transfer archive. Import. Verify results.
- 50: Pack and transfer archive. Import. Verify results.
- 52: Unknown duration, depends on training scope during Plan phase

| ID | WBS | Task | Duration | Start | Finish | Predecessors | Complete | Remaining | Total slack | Resources | Work | Actual work |
| --- | --- | --- | --- | --- | --- | --- | --- | --- | --- | --- | --- | --- |
| 56 | 5 | **Execute** | 6d? | 2015-12-10 10:00 A | 2015-12-18 10:00 | 32 | 9% | 5.45d? | 0d |  | 184h | 8h |
| 57 | 5.1 | Notify all users of upcoming migration schedule | 1d? | 2015-12-10 10:00 | 2015-12-11 10:00 |  |  |  | 5d | Everett Taylor | 8h |  |
| 58 | 5.2 | **Migrate each repo** | 1d | 2015-12-10 10:00 | 2015-12-11 10:00 | 32 |  |  | 0d |  | 72h |  |
| 59 | 5.2.1 | Repo 1 | 1d | 2015-12-10 10:00 | 2015-12-11 10:00 |  |  |  | 0d | Alex Rea; Piin Tsang; Everett Taylor | 24h |  |
| 60 | 5.2.2 | Repo 2 | 1d | 2015-12-10 10:00 | 2015-12-11 10:00 |  |  |  | 0d | Alex Rea; Piin Tsang; Everett Taylor | 24h |  |
| 61 | 5.2.3 | Repo 3 | 1d | 2015-12-10 10:00 | 2015-12-11 10:00 |  |  |  | 0d | Alex Rea; Piin Tsang; Everett Taylor | 24h |  |
| 62 | 5.3 | Set up and configure any necessary build services | 5d? | 2015-12-11 10:00 | 2015-12-18 10:00 | 58 |  |  | 0d | Everett Taylor; Piin Tsang | 80h |  |
| 63 | 5.4 | Set up and configure proxy server, test for performance | 2d? | 2015-12-11 10:00 A | 2015-12-15 10:00 | 58 | 50% | 1d? | 3d | Everett Taylor; Alex Rea | 24h | 8h |
| 64 | 6 | **Review** | 2d | 2015-12-18 10:00 | 2015-12-22 10:00 | 56 |  |  | 0d |  | 16h |  |
| 65 | 6.1 | Final validation of results | 2d | 2015-12-18 10:00 | 2015-12-22 10:00 |  |  |  | 0d | Everett Taylor | 16h |  |
| 66 | 7 | **Finalize** | 1d? | 2015-12-22 10:00 | 2015-12-28 10:00 | 64 |  |  | 0d |  |  |  |
| 67 | 7.1 | Post-mordem | 0.25d | 2015-12-22 10:00 | 2015-12-22 12:00 |  |  |  | 0.75d |  |  |  |
| 68 | 7.2 | Address any remaining issues | 1d? | 2015-12-22 10:00 | 2015-12-28 10:00 |  |  |  | 0d |  |  |  |
| 69 | 7.3 | Archive and decommission old Pasadena servers | 1d? | 2015-12-22 10:00 | 2015-12-28 10:00 |  |  |  | 0d |  |  |  |

Notes:
- 59: Pack and transfer archive. Import. Verify results.
- 60: Pack and transfer archive. Import. Verify results.
- 61: Pack and transfer archive. Import. Verify results.
- 63: Procurement is done
